# POC项目

Schedule from a web Gantt chart, 2024-09-25 to 2025-02-14.
Saturdays and Sundays are off

## Schedule

| ID | WBS | Task | Duration | Start | Finish | Predecessors | inPeople | Status |
| --- | --- | --- | --- | --- | --- | --- | --- | --- |
| 2 | 1 | SOR确认 | 4d | 2024-09-25 | 2024-09-30 |  | HMCT&Alpine&ArcSoft |  |
| 3 | 2 | 开发文档交付 | 18d | 2024-10-01 | 2024-10-24 | 2 | ArcSoft | waiting |
| 4 | 3 | UE确认 | 3d | 2024-10-10 | 2024-10-14 |  |  |  |
| 5 | 4 | 内部UI作成 | 5d | 2024-10-15 | 2024-10-21 | 4 |  | waiting |
| 6 | 5 | 开发环境提供 | 23d | 2024-09-25 | 2024-10-25 |  | Alpine |  |
| 7 | 6 | 整车环境提供 | 23d | 2024-09-25 | 2024-10-25 |  | HMCT |  |
| 8 | 7 | 8255平台移植 | 15d | 2024-10-28 | 2024-11-15 | 6 | Alpine&ArcSoft | waiting |
| 9 | 8 | 感知算法调优 | 20d | 2024-11-18 | 2024-12-13 | 8 | ArcSoft | waiting |
| 10 | 9 | 台架联合调试 | 20d | 2024-11-18 | 2024-12-13 | 8 | Alpine&ArcSoft | waiting |
| 11 | 10 | 实车联合调试 | 13d | 2024-12-16 | 2025-01-01 | 10 | Alpine&ArcSoft | waiting |
| 12 | 11 | β版本交付 | 12d | 2025-01-02 | 2025-01-17 | 11 | ArcSoft | waiting |
| 13 | 12 | 实车效果调优 | 10d | 2025-01-20 | 2025-01-31 | 12 | ArcSoft | waiting |
| 14 | 13 | Final版本交付 | 5d | 2025-02-03 | 2025-02-07 | 13 | ArcSoft | waiting |
| 15 | 14 | 版本验收 | 5d | 2025-02-10 | 2025-02-14 | 14 | HMCT&Alpine&ArcSoft | waiting |

Notes:
- 2: 项目方确认的SOR/项目计划表
- 3: 方案设计说明、API文档、项目开发计划，接口沟通
- 6: 样件板、摄像头样件、摄像头取流工具和编译工具
- 7: 1辆目标实车（运至杭州，需要有临牌和商业保险）
- 8: 示例程序、α版SDK、测试报告（α版本用于集成调试）
- 9: 精度测试报告
- 10: 上车前的联调
- 11: 具备目标功能的实车
- 12: 功能说明文档、示例程序、β版SDK、测试报告
- 13: 目标功能优化的实车
- 14: 功能说明文档、示例程序、Final版SDK、测试报告
- 15: 验收报告
